# 1200V,140mΩ

Schedule from a web Gantt chart, 2024-07-16 to 2026-10-30.
Every day is a working day

## Schedule

| ID | WBS | Task | Duration | Start | Finish | Predecessors | Complete | Status |
| --- | --- | --- | --- | --- | --- | --- | --- | --- |
| 2 | 1 | Kick off | 6d | 2024-07-16 | 2024-07-21 |  | 100% | done |
| 3 | 2 | Design & Layout | 17d | 2024-07-22 | 2024-08-07 |  | 100% | done |
| 4 | 3 | FT 调试 | 315d | 2024-10-09 | 2025-08-19 |  | 100% | done |
| 5 | 4 | **Pre-Qual** | 52d | 2025-08-20 | 2025-10-10 |  | 100% | done |
| 6 | 4.1 | RE168H | 9d | 2025-08-20 | 2025-08-28 |  | 100% | done |
| 7 | 4.2 | RE504H | 20d | 2025-08-28 | 2025-09-16 |  | 100% | done |
| 8 | 4.3 | RE1008H | 25d | 2025-09-16 | 2025-10-10 |  | 100% | done |
| 9 | 5 | RSA | 428d | 2025-08-29 | 2026-10-30 | 6 | 28% |  |
| 10 | 6 | **Formal Qual** | 170d | 2025-10-20 | 2026-04-07 |  |  | waiting |
| 11 | 6.1 | **1st qual lot** | 150d | 2025-10-20 | 2026-03-18 |  |  | waiting |
| 12 | 6.1.1 | Fab Process & F/O | 36d | 2025-10-20 | 2025-11-24 |  |  | waiting |
| 13 | 6.1.2 | PKG & FT | 45d | 2025-11-25 | 2026-01-08 |  |  | waiting |
| 14 | 6.1.3 | **RE验证** | 69d | 2026-01-09 | 2026-03-18 |  |  | waiting |
| 15 | 6.1.3.1 | RE168H | 12d | 2026-01-09 | 2026-01-20 |  |  | waiting |
| 16 | 6.1.3.2 | RE504H | 24d | 2026-01-21 | 2026-02-13 |  |  | waiting |
| 17 | 6.1.3.3 | RE1008H | 33d | 2026-02-14 | 2026-03-18 |  |  | waiting |
| 18 | 6.1.4 | AE验证 | 1d | 2026-01-09 | 2026-01-09 | 13 | 14% | waiting |
| 20 | 6.2 | **2nd&3rd qual lot** | 149d | 2025-11-10 | 2026-04-07 |  |  | waiting |
| 21 | 6.2.1 | Fab Process &F/O | 36d | 2025-11-10 | 2025-12-15 |  |  | waiting |
| 22 | 6.2.2 | PKG & FT | 45d | 2025-12-15 | 2026-01-28 |  |  | waiting |
| 23 | 6.2.3 | **RE验证** | 69d | 2026-01-29 | 2026-04-07 |  |  | waiting |
| 24 | 6.2.3.1 | RE168H | 12d | 2026-01-29 | 2026-02-09 |  |  | waiting |
| 25 | 6.2.3.2 | RE504H | 24d | 2026-02-10 | 2026-03-05 |  |  | waiting |
| 26 | 6.2.3.3 | RE1008H | 33d | 2026-03-06 | 2026-04-07 |  |  | waiting |
| 27 | 6.3 | AE验证 | 14d | 2026-01-29 | 2026-02-11 | 22 |  | waiting |

| ID | WBS | Task | Duration | Start | Finish | Predecessors | Status |
| --- | --- | --- | --- | --- | --- | --- | --- |
| 28 | 7 | **Datasheet** | 84d | 2026-01-21 | 2026-04-14 |  | waiting |
| 29 | 7.1 | DS V0.5 | 14d | 2026-01-21 | 2026-02-03 | 15 | waiting |
| 30 | 7.2 | DS V0.9 | 14d | 2026-02-10 | 2026-02-23 | 24 | waiting |
| 31 | 7.3 | DS V1.0 | 7d | 2026-04-08 | 2026-04-14 | 26 | waiting |
| 32 | 8 | RTP | 1d | 2026-04-15 | 2026-04-15 | 31 | waiting |
